Schedule from GanttProject, 2016-10-17 to 2017-11-17.

## Calendars

- Project calendar: Mon-Fri working; Sat-Sun off.

## Resources

| Resource |
| --- |
| Ivan Bugli |
| Leonardo Chiappalupi |

## Schedule

| ID | WBS | Task | Duration | Start | Finish | Resources |
| --- | --- | --- | --- | --- | --- | --- |
| 1 | 1 | **Requirement Analysis and Specifications** | 36d | 2016-10-17 | 2016-12-05 |  |
| 2 | 1.1 | Initial meeting with clients | 1d | 2016-10-17 | 2016-10-17 | Ivan Bugli; Leonardo Chiappalupi |
| 3 | 1.2 | Main goals definition | 4d | 2016-10-18 | 2016-10-21 | Ivan Bugli; Leonardo Chiappalupi |
| 4 | 1.3 | Goals and requirements draft #1 | 7d | 2016-10-24 | 2016-11-01 | Ivan Bugli [50%]; Leonardo Chiappalupi [50%] |
| 5 | 1.4 | Assumptions and add. specifications #1 | 6d | 2016-10-25 | 2016-11-01 | Ivan Bugli [50%]; Leonardo Chiappalupi [50%] |
| 6 | 1.5 | Meeting with clients and review | 1d | 2016-11-02 | 2016-11-02 | Ivan Bugli; Leonardo Chiappalupi |
| 7 | 1.6 | **RASD first draft** | 10d | 2016-11-03 | 2016-11-16 |  |
| 8 | 1.6.1 | Goals detailed definition | 7d | 2016-11-03 | 2016-11-11 | Ivan Bugli |
| 9 | 1.6.2 | Specifications detailed definition | 6d | 2016-11-04 | 2016-11-11 | Leonardo Chiappalupi |
| 10 | 1.6.3 | Requirements detailed definition | 5d | 2016-11-08 | 2016-11-14 | Leonardo Chiappalupi |
| 11 | 1.6.4 | Assumptions final definition | 5d | 2016-11-09 | 2016-11-15 | Ivan Bugli |
| 12 | 1.6.5 | UI Mockups initial elaboration | 2d | 2016-11-14 | 2016-11-15 | Leonardo Chiappalupi |
| 13 | 1.6.6 | Example scenarios definition | 2d | 2016-11-14 | 2016-11-15 | Ivan Bugli |
| 14 | 1.6.7 | UML use case diagrams and descr. draft | 2d | 2016-11-14 | 2016-11-15 | Ivan Bugli [50%]; Leonardo Chiappalupi [50%] |
| 15 | 1.6.8 | Example alloy model analysis and worlds | 2d | 2016-11-15 | 2016-11-16 | Leonardo Chiappalupi |
| 16 | 1.7 | Meeting with clients and review | 1d | 2016-11-17 | 2016-11-17 | Ivan Bugli; Leonardo Chiappalupi |
| 17 | 1.8 | **RASD second draft** | 7d | 2016-11-18 | 2016-11-28 |  |
| 18 | 1.8.1 | Final goals definition | 3d | 2016-11-18 | 2016-11-22 | Leonardo Chiappalupi |
| 19 | 1.8.2 | Final specifications definition | 2d | 2016-11-21 | 2016-11-22 | Ivan Bugli |
| 20 | 1.8.3 | Final requirements definition | 3d | 2016-11-21 | 2016-11-23 | Leonardo Chiappalupi |
| 21 | 1.8.4 | Final assumptions definition | 2d | 2016-11-21 | 2016-11-22 | Ivan Bugli |
| 22 | 1.8.5 | UI Mockups refinements | 1d | 2016-11-23 | 2016-11-23 | Leonardo Chiappalupi |
| 23 | 1.8.6 | Example scenarios refinement | 2d | 2016-11-24 | 2016-11-25 | Ivan Bugli [90%]; Leonardo Chiappalupi [10%] |
| 24 | 1.8.7 | UML use case diagrams refinement | 2d | 2016-11-24 | 2016-11-25 | Ivan Bugli [50%]; Leonardo Chiappalupi [50%] |
| 25 | 1.8.8 | Alloy model revision | 1d | 2016-11-28 | 2016-11-28 | Ivan Bugli [10%]; Leonardo Chiappalupi [90%] |
| 26 | 1.9 | Meeting with clients and review | 1d | 2016-11-29 | 2016-11-29 | Ivan Bugli; Leonardo Chiappalupi |
| 27 | 1.10 | Final further refinements | 3d | 2016-11-30 | 2016-12-02 | Ivan Bugli [50%]; Leonardo Chiappalupi [50%] |
| 28 | 1.11 | Final clients meeting and RASD approvation | 1d | 2016-12-05 | 2016-12-05 | Ivan Bugli; Leonardo Chiappalupi |

| ID | WBS | Task | Duration | Start | Finish | Complete | Resources |
| --- | --- | --- | --- | --- | --- | --- | --- |
| 29 | 2 | **Platform Design** | 40d | 2016-12-06 | 2017-01-30 |  |  |
| 30 | 2.1 | First high-level platform design | 4d | 2016-12-06 | 2016-12-09 |  | Ivan Bugli [30%]; Leonardo Chiappalupi [70%] |
| 31 | 2.2 | High level component analysis | 2d | 2016-12-08 | 2016-12-09 |  | Ivan Bugli [70%]; Leonardo Chiappalupi [30%] |
| 32 | 2.3 | Meeting with clients and review | 1d | 2016-12-12 | 2016-12-12 |  | Ivan Bugli; Leonardo Chiappalupi |
| 33 | 2.4 | **DD first draft** | 15d | 2016-12-13 | 2017-01-02 |  |  |
| 34 | 2.4.1 | Component structure design | 3d | 2016-12-13 | 2016-12-15 |  | Leonardo Chiappalupi |
| 35 | 2.4.2 | Persistance design | 2d | 2016-12-16 | 2016-12-19 |  | Ivan Bugli |
| 36 | 2.4.3 | Deployment design | 2d | 2016-12-20 | 2016-12-21 |  | Leonardo Chiappalupi |
| 37 | 2.4.4 | Interfaces detailed definition | 3d | 2016-12-22 | 2016-12-26 |  | Ivan Bugli [50%]; Leonardo Chiappalupi [50%] |
| 38 | 2.4.5 | Tiers and layers definition | 1d | 2016-12-27 | 2016-12-27 |  | Ivan Bugli [50%]; Leonardo Chiappalupi [50%] |
| 39 | 2.4.6 | Algorithms drafts | 3d | 2016-12-28 | 2016-12-30 |  | Ivan Bugli [50%]; Leonardo Chiappalupi [50%] |
| 40 | 2.4.7 | Requirements traceability check | 1d | 2017-01-02 | 2017-01-02 |  | Ivan Bugli |
| 41 | 2.5 | Meeting with clients and review | 1d | 2017-01-03 | 2017-01-03 |  | Ivan Bugli; Leonardo Chiappalupi |
| 42 | 2.6 | **DD second draft** | 13d | 2017-01-04 | 2017-01-20 |  |  |
| 43 | 2.6.1 | Final components definition | 3d | 2017-01-04 | 2017-01-06 |  | Ivan Bugli [20%]; Leonardo Chiappalupi [80%] |
| 44 | 2.6.2 | Final persistance design | 2d | 2017-01-09 | 2017-01-10 |  | Ivan Bugli [80%]; Leonardo Chiappalupi [20%] |
| 45 | 2.6.3 | Final deployment design | 2d | 2017-01-11 | 2017-01-12 |  | Ivan Bugli [20%]; Leonardo Chiappalupi [80%] |
| 46 | 2.6.4 | Final interfaces definition | 2d | 2017-01-13 | 2017-01-16 |  | Ivan Bugli [50%]; Leonardo Chiappalupi [50%] |
| 47 | 2.6.5 | Algorithms review | 3d | 2017-01-17 | 2017-01-19 |  | Ivan Bugli; Leonardo Chiappalupi |
| 48 | 2.6.6 | Requirements traceability check | 1d | 2017-01-20 | 2017-01-20 |  | Ivan Bugli [80%]; Leonardo Chiappalupi [20%] |
| 49 | 2.7 | Meeting with clients and review | 1d | 2017-01-23 | 2017-01-23 |  | Ivan Bugli; Leonardo Chiappalupi |
| 50 | 2.8 | Final further design refinements | 4d | 2017-01-24 | 2017-01-27 |  | Ivan Bugli [50%]; Leonardo Chiappalupi |
| 51 | 2.9 | Final clients meeting and DD approvation | 1d | 2017-01-30 | 2017-01-30 |  | Ivan Bugli; Leonardo Chiappalupi |
| 52 | 3 | **Development** | 182d | 2017-01-31 | 2017-10-11 |  |  |
| 53 | 3.1 | Components development | 99d | 2017-01-31 | 2017-06-16 |  | Ivan Bugli [50%]; Leonardo Chiappalupi [50%] |
| 54 | 3.2 | External components analysis | 7d | 2017-02-20 | 2017-02-28 | 2% | Ivan Bugli [50%]; Leonardo Chiappalupi [50%] |
| 55 | 3.3 | Code inspection | 85d | 2017-02-20 | 2017-06-16 |  | Ivan Bugli [50%]; Leonardo Chiappalupi [50%] |
| 56 | 3.4 | Unit tests | 90d | 2017-02-22 | 2017-06-27 |  | Ivan Bugli [50%]; Leonardo Chiappalupi [50%] |
| 57 | 3.5 | Components integration | 15d | 2017-05-01 | 2017-05-19 |  | Ivan Bugli [20%]; Leonardo Chiappalupi [80%] |
| 58 | 3.6 | Subsystems integration | 14d | 2017-05-19 | 2017-06-07 |  | Ivan Bugli [30%]; Leonardo Chiappalupi [70%] |
| 59 | 3.7 | Integration testing | 28d | 2017-05-08 | 2017-06-14 |  | Ivan Bugli [80%]; Leonardo Chiappalupi [20%] |
| 60 | 3.8 | System testing | 14d | 2017-06-12 | 2017-06-29 |  | Ivan Bugli |
| 61 | 3.9 | Cars applet development | 30d | 2017-06-12 | 2017-07-21 |  | Ivan Bugli [30%]; Leonardo Chiappalupi [70%] |
| 62 | 3.10 | Mobile apps development | 55d | 2017-06-12 | 2017-08-25 |  | Ivan Bugli [50%]; Leonardo Chiappalupi [50%] |
| 63 | 3.11 | Web apps development | 45d | 2017-07-03 | 2017-09-01 |  | Ivan Bugli [40%]; Leonardo Chiappalupi [60%] |
| 64 | 3.12 | Apps integration | 15d | 2017-08-21 | 2017-09-08 |  | Ivan Bugli [60%]; Leonardo Chiappalupi [40%] |
| 65 | 3.13 | Apps integration testing | 15d | 2017-08-24 | 2017-09-13 |  | Ivan Bugli |
| 66 | 3.14 | First internal beta demonstration | 1d | 2017-09-14 | 2017-09-14 |  | Ivan Bugli; Leonardo Chiappalupi |
| 67 | 3.15 | Refinements and bugfixes | 5d | 2017-09-15 | 2017-09-21 |  | Ivan Bugli; Leonardo Chiappalupi [30%] |
| 68 | 3.16 | First client demonstration and review | 1d | 2017-09-22 | 2017-09-22 |  | Ivan Bugli; Leonardo Chiappalupi |
| 69 | 3.17 | Refinement and bugfixes | 5d | 2017-09-25 | 2017-09-29 |  | Ivan Bugli [30%]; Leonardo Chiappalupi |
| 70 | 3.18 | Second internal beta demonstration | 1d | 2017-10-02 | 2017-10-02 |  | Ivan Bugli; Leonardo Chiappalupi |
| 71 | 3.19 | Second client demonstration and review | 1d | 2017-10-03 | 2017-10-03 |  | Ivan Bugli; Leonardo Chiappalupi |
| 72 | 3.20 | Final fixes and overall review | 3d | 2017-10-04 | 2017-10-06 |  | Ivan Bugli; Leonardo Chiappalupi |
| 73 | 3.21 | Final clients presentation | 1d | 2017-10-09 | 2017-10-09 |  | Ivan Bugli; Leonardo Chiappalupi |
| 74 | 3.22 | Release | 2d | 2017-10-10 | 2017-10-11 |  | Ivan Bugli; Leonardo Chiappalupi |

| ID | WBS | Task | Duration | Start | Finish | Complete | Resources |
| --- | --- | --- | --- | --- | --- | --- | --- |
| 75 | 4 | **Deployment** | 13d | 2017-10-12 | 2017-10-30 |  |  |
| 76 | 4.1 | AWS initial setup | 3d | 2017-10-12 | 2017-10-16 | 3% | Leonardo Chiappalupi |
| 77 | 4.2 | RDS database setup | 3d | 2017-10-17 | 2017-10-19 |  | Ivan Bugli [50%]; Leonardo Chiappalupi [50%] |
| 78 | 4.3 | Server packaging and deployment | 2d | 2017-10-20 | 2017-10-23 |  | Leonardo Chiappalupi |
| 79 | 4.4 | Mobile apps stores distribution | 2d | 2017-10-24 | 2017-10-25 |  | Ivan Bugli |
| 80 | 4.5 | System managers meeting | 1d | 2017-10-26 | 2017-10-26 |  | Ivan Bugli; Leonardo Chiappalupi |
| 81 | 4.6 | Operators meeting | 1d | 2017-10-27 | 2017-10-27 |  | Ivan Bugli; Leonardo Chiappalupi |
| 82 | 4.7 | Meeting with clients and report | 1d | 2017-10-30 | 2017-10-30 |  | Ivan Bugli; Leonardo Chiappalupi |
| 83 | 5 | **Release** | 14d | 2017-10-31 | 2017-11-17 |  |  |
| 84 | 5.1 | Cloud server startup | 1d | 2017-10-31 | 2017-10-31 |  | Leonardo Chiappalupi |
| 85 | 5.2 | Load balancing simulations | 3d | 2017-11-01 | 2017-11-03 |  | Ivan Bugli [50%]; Leonardo Chiappalupi [50%] |
| 86 | 5.3 | Overall system simulations | 5d | 2017-11-06 | 2017-11-10 |  | Ivan Bugli; Leonardo Chiappalupi [50%] |
| 87 | 5.4 | Final checks and platform public release | 5d | 2017-11-13 | 2017-11-17 |  | Ivan Bugli; Leonardo Chiappalupi |
